# 需求工程甘特图

How a schedule from MS Project changed from version to version. A marks actual dates.

## Version 1 (saved 2017-11-04)

| ID | WBS | Task | Duration | Start | Finish | Predecessors | Complete | Total float | Constraint |
| --- | --- | --- | --- | --- | --- | --- | --- | --- | --- |
| 1 | 1 | **准备阶段** | 34.5d | 2017-09-28 A | 2017-10-28 |  | 100% |  |  |
| 2 |  | 团队成立 | 0d | 2017-09-28 A | 2017-09-28 A |  | 100% |  |  |
| 3 |  | 小组会议 | 0d | 2017-09-28 A | 2017-09-28 A |  | 100% |  |  |
| 4 |  | 软件安装 | 0d | 2017-09-29 A | 2017-09-29 A | 2 | 100% |  |  |
| 5 |  | 搜集文档模板 | 12d | 2017-09-29 A | 2017-10-10 A | 2 | 100% |  |  |
| 6 |  | 可行性分析 | 12.5d | 2017-10-11 A | 2017-10-23 A | 5 | 100% |  |  |
| 7 |  | 项目总体计划 | 1d | 2017-10-23 A | 2017-10-24 A | 6 | 100% |  |  |
| 8 | 2 | **计划阶段** | 6.5d | 2017-10-25 A | 2017-10-28 |  | 84% |  |  |
| 9 |  | wbs初稿 | 1d | 2017-10-25 A | 2017-10-25 |  | 20% |  |  |
| 10 |  | 项目章程 | 1d | 2017-10-25 A | 2017-10-25 A | 7 | 100% |  |  |
| 11 |  | 需求工程项目计划 | 3d | 2017-10-26 A | 2017-10-28 A | 10 | 100% |  |  |
| 12 | 3 | **执行阶段** | 51d | 2017-11-01 | 2017-12-21 |  | 1% |  |  |
| 13 | 3.1 | **需求工程** | 54.5d | 2017-11-01 | 2017-12-21 |  | 1% |  |  |
| 14 |  | 小组会议 | 0d | 2017-11-02 A | 2017-11-02 A |  | 100% |  |  |
| 15 | 3.1.2 | **需求获取** | 21d | 2017-11-03 A | 2017-11-23 |  | 1% |  |  |
| 16 |  | 小组会议 | 1d | 2017-11-03 A | 2017-11-03 A |  | 100% |  |  |
| 17 |  | 定义愿景和范围 | 8d | 2017-11-03 | 2017-11-10 | 10 |  |  |  |
| 18 |  | 小组会议 | 1d | 2017-11-08 | 2017-11-08 |  |  |  |  |
| 19 |  | 识别用户群、选择产品代言人 | 65d | 2017-11-11 | 2018-01-14 | 17 |  | 3d |  |
| 20 |  | 小组会议 | 1d | 2017-11-07 | 2017-11-07 |  |  |  |  |
| 21 |  | 组织焦点小组 | 4d | 2017-11-08 | 2017-11-11 | 17 |  |  |  |
| 22 |  | 小组会议 | 0d | 2017-11-08 | 2017-11-08 |  |  |  |  |
| 23 |  | 识别用户需求 | 8d | 2017-11-08 | 2017-11-16 | 17 |  |  |  |
| 24 |  | 小组会议 | 0d | 2017-11-09 | 2017-11-09 |  |  |  |  |
| 25 |  | 需求获取访谈 | 4d | 2017-11-16 | 2017-11-20 | 23 |  |  |  |
| 26 |  | 小组会议 | 0d | 2017-11-10 | 2017-11-10 |  |  |  |  |
| 27 |  | 举行需求获取讨论会 | 2d | 2017-11-09 | 2017-11-10 | 24 |  |  |  |
| 28 |  | 小组会议 | 0d | 2017-11-11 | 2017-11-11 |  |  |  |  |
| 29 |  | 分发调查问卷 | 3d | 2017-11-09 | 2017-11-11 | 24 |  |  |  |
| 30 |  | 小组会议 | 0d | 2017-11-12 | 2017-11-12 |  |  |  |  |
| 31 |  | 分析文档 | 8d | 2017-11-12 | 2017-11-19 | 29 |  |  |  |
| 32 |  | 小组会议 | 0d | 2017-11-13 | 2017-11-13 |  |  |  |  |
| 33 |  | 小组会议 | 0d | 2017-11-14 | 2017-11-14 |  |  |  |  |
| 34 |  | 检查问题报告 | 3d | 2017-11-20 | 2017-11-22 | 31 |  |  |  |
| 35 |  | 小组会议 | 0d | 2017-11-15 | 2017-11-15 |  |  |  |  |
| 36 |  | 重用已有的需求 | 4d | 2017-11-09 | 2017-11-12 | 24 |  |  |  |
| 37 |  | 小组会议 | 0d | 2017-11-23 | 2017-11-23 |  |  |  |  |
| 38 | 3.1.4 | **需求分析** | 18d | 2017-11-24 | 2017-12-11 |  |  |  |  |
| 39 |  | 小组会议 | 0d | 2017-11-24 | 2017-11-24 |  |  |  |  |
| 40 |  | 应用环境建模 | 2d | 2017-11-24 | 2017-11-25 | 31 |  |  |  |
| 41 |  | 小组会议 | 0d | 2017-11-25 | 2017-11-25 |  |  |  |  |
| 42 |  | 创建原型 | 2d | 2017-11-26 | 2017-11-27 | 31 |  |  |  |
| 43 |  | 小组会议 | 0d | 2017-11-27 | 2017-11-27 |  |  |  |  |
| 44 |  | 分析实现可行性 | 2d | 2017-11-28 | 2017-11-29 | 31 |  |  |  |
| 45 |  | 小组会议 | 0d | 2017-11-29 | 2017-11-29 |  |  |  |  |
| 46 |  | 排列需求优先级 | 1d | 2017-12-01 | 2017-12-01 | 31 |  |  |  |
| 47 |  | 小组会议 | 0d | 2017-12-01 | 2017-12-01 |  |  |  |  |
| 48 |  | 创建数字字典 | 2d | 2017-12-03 | 2017-12-04 | 46 |  |  |  |
| 49 |  | 小组会议 | 0d | 2017-12-04 | 2017-12-04 |  |  |  |  |
| 50 |  | 需求建模 | 2d | 2017-12-05 | 2017-12-06 | 40 |  |  |  |
| 51 |  | 小组会议 | 0d | 2017-12-06 | 2017-12-06 |  |  |  |  |
| 52 |  | 分析接口 | 2d | 2017-12-07 | 2017-12-08 | 50 |  |  |  |
| 53 |  | 小组会议 | 0d | 2017-12-09 | 2017-12-09 |  |  |  |  |
| 54 |  | 将需求分配到子接口 | 2d | 2017-12-09 | 2017-12-10 | 52 |  |  |  |
| 55 |  | 小组会议 | 0d | 2017-12-10 | 2017-12-10 |  |  |  |  |
| 56 | 3.1.6 | **规范说明** | 16d | 2017-12-15 | 2017-12-30 |  |  |  |  |
| 57 |  | 小组会议 | 0d | 2017-12-15 | 2017-12-15 |  |  |  |  |
| 58 |  | 采用需求文档模板 | 1d | 2017-12-15 | 2017-12-15 | 31 |  |  |  |
| 59 |  | 识别需求源头 | 1d | 2017-12-16 | 2017-12-16 | 42 |  |  |  |
| 60 |  | 小组会议 | 1d | 2017-12-16 | 2017-12-16 |  |  | 32d | start no earlier than 2017-12-16 |
| 61 |  | 为每个需求分配唯一标识 | 1d | 2017-12-17 | 2017-12-17 | 59 |  |  |  |
| 62 |  | 记录业务规则 | 1d | 2017-12-18 | 2017-12-18 |  |  |  |  |
| 63 |  | 小组会议 | 1d | 2017-12-19 | 2017-12-19 |  |  | 29d | start no earlier than 2017-12-19 |
| 64 |  | 描述非功能性需求 | 2d | 2017-12-20 | 2017-12-21 | 59 |  |  |  |
| 65 |  | 小组会议 | 1d | 2017-12-22 | 2017-12-22 |  |  |  |  |
| 66 |  | 需求功能说明书 | 4d | 2017-12-03 | 2017-12-06 | 58 |  |  |  |
| 67 |  | 小组会议 | 0d | 2017-12-08 | 2017-12-08 |  |  |  |  |
| 68 |  | 小组会议 | 0d | 2017-12-09 | 2017-12-09 |  |  |  |  |
| 69 |  | 小组会议 | 0d | 2017-12-10 | 2017-12-10 |  |  |  |  |
| 70 | 3.1.7 | **需求验证** | 12.5d | 2017-12-11 | 2017-12-19 |  |  |  |  |

| ID | WBS | Task | Duration | Start | Finish | Predecessors |
| --- | --- | --- | --- | --- | --- | --- |
| 71 |  | 小组会议 | 1d | 2017-12-11 | 2017-12-11 |  |
| 72 |  | 评审需求 | 4d | 2017-11-24 | 2017-11-27 | 58 |
| 73 |  | 小组会议 | 0d | 2017-12-12 | 2017-12-12 |  |
| 74 |  | 测试需求 | 4d | 2017-11-24 | 2017-11-27 | 58 |
| 75 |  | 小组会议 | 0d | 2017-12-13 | 2017-12-13 |  |
| 76 |  | 定义验收条件 | 4d | 2017-11-28 | 2017-12-01 | 72 |
| 77 |  | 小组会议 | 0d | 2017-12-14 | 2017-12-14 |  |
| 78 |  | 模拟需求 | 4d | 2017-12-02 | 2017-12-05 | 76 |
| 79 |  | 小组会议 | 0d | 2017-12-16 | 2017-12-16 |  |
| 80 |  | 小组会议 | 0d | 2017-12-16 | 2017-12-16 |  |
| 81 | 4 | **管理阶段** | 30.5d | 2017-12-17 | 2018-01-12 |  |
| 82 |  | 小组会议 | 0d | 2017-12-17 | 2017-12-17 |  |
| 83 | 4.2 | **需求管理** | 12.5d | 2017-12-17 | 2017-12-25 |  |
| 84 |  | 建立变更控制流程 | 2d | 2017-12-17 | 2017-12-18 | 58 |
| 85 |  | 分析变更影响 | 2d | 2017-12-19 | 2017-12-20 | 84 |
| 86 |  | 小组会议 | 1d | 2017-12-18 | 2017-12-18 |  |
| 87 |  | 建立基线，管理需求版本 | 2d | 2017-12-19 | 2017-12-20 | 58 |
| 88 |  | 小组会议 | 1d | 2017-12-20 | 2017-12-20 |  |
| 89 |  | 维护变更历史 | 2d | 2017-12-20 | 2017-12-21 | 84 |
| 90 |  | 小组会议 | 0d | 2017-12-20 | 2017-12-20 |  |
| 91 |  | 跟踪需求状态 | 1d | 2017-12-21 | 2017-12-21 |  |
| 92 |  | 小组会议 | 0d | 2017-12-21 | 2017-12-21 |  |
| 93 |  | 跟踪需求问题 | 1d | 2017-12-22 | 2017-12-22 |  |
| 94 |  | 小组会议 | 0d | 2017-12-22 | 2017-12-22 |  |
| 95 |  | 维护需求可跟踪矩阵 | 1d | 2017-12-23 | 2017-12-23 |  |
| 96 |  | 小组会议 | 0d | 2017-12-23 | 2017-12-23 |  |
| 97 |  | 使用需求管理工具 | 2d | 2017-12-24 | 2017-12-25 | 50 |
| 98 |  | 小组会议 | 1d | 2017-12-24 | 2017-12-24 |  |
| 99 |  | 小组会议 | 1d | 2017-12-25 | 2017-12-25 |  |
| 100 | 4.4 | **需求知识** | 6d | 2017-12-25 | 2017-12-30 |  |
| 101 |  | 培训业务分析师 | 1d | 2017-12-25 | 2017-12-25 |  |
| 102 |  | 小组会议 | 1d | 2017-12-26 | 2017-12-26 |  |
| 103 |  | 向干系人讲解需求内容 | 2d | 2017-12-26 | 2017-12-27 |  |
| 104 |  | 小组会议 | 1d | 2017-12-27 | 2017-12-27 |  |
| 105 |  | 向开发人员讲应用领域知识 | 1d | 2017-12-27 | 2017-12-27 |  |
| 106 |  | 小组会议 | 1d | 2017-12-28 | 2017-12-28 |  |
| 107 |  | 定义一个需求工程流程 | 3d | 2017-12-26 | 2017-12-28 | 101 |
| 108 |  | 小组会议 | 0d | 2017-12-29 | 2017-12-29 |  |
| 109 |  | 建立一个词汇表 | 1d | 2017-12-29 | 2017-12-29 |  |
| 110 |  | 小组会议 | 1d | 2017-12-30 | 2017-12-30 |  |
| 111 | 4.5 | **项目管理** | 14d | 2017-12-30 | 2018-01-12 |  |
| 112 |  | 选择合适的生命周期模型 | 1d | 2017-12-30 | 2017-12-30 |  |
| 113 |  | 小组会议 | 1d | 2017-12-31 | 2017-12-31 |  |
| 114 |  | 规划需求方案 | 8d | 2017-12-29 | 2018-01-05 | 107 |
| 115 |  | 小组会议 | 0d | 2018-01-01 | 2018-01-01 |  |
| 116 |  | 小组会议 | 0d | 2018-01-02 | 2018-01-02 |  |
| 117 |  | 小组会议 | 0d | 2018-01-03 | 2018-01-03 |  |
| 118 |  | 估算需求工作量 | 2d | 2018-01-06 | 2018-01-07 | 114 |
| 119 |  | 小组会议 | 1d | 2018-01-06 | 2018-01-06 |  |
| 120 |  | 基于需求做计划 | 2d | 2018-01-06 | 2018-01-07 | 114 |
| 121 |  | 小组会议 | 1d | 2018-01-05 | 2018-01-05 |  |
| 122 |  | 发现需求决策者 | 1d | 2018-01-06 | 2018-01-06 |  |
| 123 |  | 小组会议 | 1d | 2018-01-06 | 2018-01-06 |  |
| 124 |  | 小组会议 | 1d | 2018-01-07 | 2018-01-07 |  |
| 125 |  | 重新协商承诺 | 2d | 2018-01-07 | 2018-01-08 | 124 |
| 126 |  | 小组会议 | 1d | 2018-01-08 | 2018-01-08 |  |
| 127 |  | 管理需求风险 | 2d | 2018-01-09 | 2018-01-10 | 114 |
| 128 |  | 小组会议 | 1d | 2018-01-09 | 2018-01-09 |  |
| 129 |  | 跟踪记录需求工作量 | 2d | 2018-01-09 | 2018-01-10 | 128 |
| 130 |  | 小组会议 | 1d | 2018-01-10 | 2018-01-10 |  |
| 131 |  | 小组会议 | 1d | 2018-01-11 | 2018-01-11 |  |
| 132 |  | 回顾学到的经验 | 1d | 2018-01-11 | 2018-01-11 | 131 |
| 133 |  | 小组会议 | 0d | 2018-01-12 | 2018-01-12 |  |
| 134 | 5 | **收尾阶段** | 9.5d | 2018-01-12 | 2018-01-17 |  |
| 135 |  | 小组会议 | 0d | 2018-01-13 | 2018-01-13 |  |
| 136 |  | 小组会议 | 0d | 2018-01-14 | 2018-01-14 |  |
| 137 |  | 各文档检查 | 4d | 2018-01-12 | 2018-01-15 | 132 |
| 138 |  | 小组会议 | 0d | 2018-01-15 | 2018-01-15 |  |
| 139 |  | 小组会议 | 0d | 2018-01-16 | 2018-01-16 |  |
| 140 |  | 整理文档 | 2d | 2018-01-16 | 2018-01-17 | 137 |

## Version 2 (saved 2017-11-13)

Last finish stays 2018-01-17.

Changed:

| ID | Task | Start | Finish |
| --- | --- | --- | --- |
| 25 | 需求获取访谈 | 2017-11-16 → 2017-11-13 (-3d) | 2017-11-20 → 2017-11-16 (-4d) |

## Version 3 (saved 2017-11-13)

Note of the change: gtt

Last finish stays 2018-01-17.

Changed:

| ID | Task | Finish | Duration | Complete | Total float |
| --- | --- | --- | --- | --- | --- |
| 15 | **需求获取** |  |  | 1% → 2% |  |
| 19 | 识别用户群、选择产品代言人 | 2018-01-14 → 2017-11-16 (-59d) | 65d → 6d |  | 3d → 62d |

## Version 4 (saved 2017-11-29)

Note of the change: 1130wt

Last finish stays 2018-01-17. Complete tasks 10 → 28.

Added:

| ID | Task | Duration | Start | Finish | Resources |
| --- | --- | --- | --- | --- | --- |
| 17 | 项目章程 | 1d | 2017-11-03 A | 2017-11-03 A | 邱英凡; 任剑超; 史晨鑫; 汪涛; 仲叶 |
| 31 | 项目章程 | 1d | 2017-11-18 A | 2017-11-18 A | 邱英凡; 任剑超; 史晨鑫; 汪涛; 仲叶 |

Removed: 30 小组会议; 32 小组会议; 33 小组会议; 34 检查问题报告; 35 小组会议; 37 小组会议; 39 小组会议; 41 小组会议; 43 小组会议; 45 小组会议

Changed:

| ID | Task | Start | Finish | Duration | Complete | Total float |
| --- | --- | --- | --- | --- | --- | --- |
| 1 | **准备阶段** |  |  |  | 100% → 72% |  |
| 6 | 可行性分析 |  | 2017-10-23 A → 2017-10-15 A (-8d) | 12.5d → 5d |  |  |
| 7 | 项目总体计划 | 2017-10-23 A → 2017-10-17 A (-6d) | 2017-10-24 A → 2017-10-24 | 1d → 8d | 100% → 13% |  |
| 8 | **计划阶段** |  | 2017-10-28 A |  | 84% → 100% |  |
| 9 | wbs初稿 |  | 2017-10-25 A |  | 20% → 100% |  |
| 10 | 项目章程 | 2017-10-25 A → 2017-10-26 A (+1d) | 2017-10-25 A → 2017-10-26 A (+1d) |  |  |  |
| 12 | **执行阶段** |  |  |  | 1% → 42% |  |
| 13 | **需求工程** |  |  |  | 1% → 42% |  |
| 15 | **需求获取** |  |  |  | 2% → 55% |  |
| 18 | 定义愿景和范围 | 2017-11-03 A | 2017-11-10 A |  | 0% → 100% |  |
| 19 | 小组会议 | 2017-11-08 → 2017-11-05 A (-3d) | 2017-11-08 → 2017-11-05 A (-3d) |  | 0% → 100% |  |
| 20 | 识别用户群、选择产品代言人 | 2017-11-11 A | 2017-11-16 A |  | 0% → 100% | 62d → none |
| 21 | 小组会议 | 2017-11-07 → 2017-11-10 A (+3d) | 2017-11-07 → 2017-11-10 A (+3d) |  | 0% → 100% |  |
| 22 | 组织焦点小组 | 2017-11-08 A | 2017-11-11 A |  | 0% → 100% |  |
| 23 | 小组会议 | 2017-11-08 → 2017-11-13 A (+5d) | 2017-11-08 → 2017-11-13 A (+5d) |  | 0% → 100% |  |
| 24 | 识别用户需求 | 2017-11-08 A | 2017-11-16 A |  | 0% → 100% |  |
| 25 | 小组会议 | 2017-11-09 → 2017-11-17 A (+8d) | 2017-11-09 → 2017-11-17 A (+8d) |  | 0% → 100% |  |
| 26 | 需求获取访谈 | 2017-11-13 A | 2017-11-16 → 2017-12-10 (+24d) | 4d → 28d | 0% → 7% |  |
| 27 | 举行需求获取讨论会 | 2017-11-09 A | 2017-11-10 A |  | 0% → 100% |  |
| 28 | 分发调查问卷 | 2017-11-09 A | 2017-11-11 A |  | 0% → 100% |  |
| 29 | 分析文档 | 2017-11-12 A | 2017-11-19 A |  | 0% → 100% |  |
| 30 | 重用已有的需求 | 2017-11-09 → 2017-11-15 A (+6d) | 2017-11-12 → 2017-12-08 (+26d) | 4d → 24d | 0% → 30% |  |
| 32 | **需求分析** | 2017-11-24 A |  |  | 0% → 40% |  |
| 33 | 小组会议 | 2017-11-10 → 2017-11-24 A (+14d) | 2017-11-10 → 2017-11-24 A (+14d) |  | 0% → 100% |  |
| 34 | 应用环境建模 | 2017-11-24 A | 2017-11-25 A |  | 0% → 100% |  |
| 35 | 创建原型 | 2017-11-26 A | 2017-11-27 A |  | 0% → 100% |  |
| 36 | 小组会议 | 2017-11-11 → 2017-11-27 A (+16d) | 2017-11-11 → 2017-11-27 A (+16d) |  | 0% → 100% |  |
| 37 | 分析实现可行性 | 2017-11-28 A | 2017-11-29 A |  | 0% → 100% |  |
| 58 | 需求功能说明书 | 2017-12-03 → 2017-12-14 (+11d) | 2017-12-06 → 2017-12-17 (+11d) |  |  |  |

## Version 5 (saved 2017-11-30)

Last finish 2018-01-17 → 2018-01-19 (+2d). Complete tasks 28 → 45.

Added:

| ID | Task | Duration | Start | Finish | Resources |
| --- | --- | --- | --- | --- | --- |
| 7 | QA计划 | 3d | 2017-10-13 A | 2017-10-15 A |  |
| 11 | 项目总体计划 | 1d | 2017-10-26 A | 2017-10-26 A | 史晨鑫 [20%]; 汪涛 [20%]; 仲叶 [20%] |
| 13 | 项目章程 | 1d | 2017-10-26 A | 2017-10-26 A | 史晨鑫 [20%]; 汪涛 [20%] |
| 16 | wbs修改 | 1d | 2017-11-01 A | 2017-11-01 A | 仲叶 [20%]; 汪涛 [20%] |
| 19 | 需求工程项目计划 | 1d | 2017-11-02 A | 2017-11-02 A | 史晨鑫 [20%]; 汪涛 [20%] |
| 22 | 需求工程项目计划 | 1d | 2017-11-03 A | 2017-11-03 A | 史晨鑫 [20%]; 汪涛 [20%]; 仲叶 [20%] |
| 27 | 用户群分类 | 2d | 2017-11-05 A | 2017-11-06 A | 仲叶 [20%] |
| 31 | 用户群分类 | 1d | 2017-11-12 A | 2017-11-12 A | 仲叶 [20%] |
| 40 | 用户群分类 | 1d | 2017-11-23 A | 2017-11-23 A | 仲叶 [20%] |
| 41 | 定义愿景和范围 | 1d | 2017-11-23 A | 2017-11-24 A | 史晨鑫 [20%] |
| 42 | 可行性分析 | 1d | 2017-11-23 A | 2017-11-23 A | 仲叶 [20%] |
| 48 | 用户群分类 | 1d | 2017-11-28 A | 2017-11-28 A | 邱英凡 [20%] |
| 49 | 需求工程项目计划 | 1d | 2017-11-28 A | 2017-11-28 A | 邱英凡 [20%] |
| 51 | 定义愿景和范围 | 1d | 2017-11-29 A | 2017-11-29 A | 邱英凡 [20%] |
| 52 | 可行性分析 | 1d | 2017-11-29 A | 2017-11-29 A | 汪涛 [20%] |
| 53 | 用户群分类 | 1d | 2017-11-30 A | 2017-11-30 A | 仲叶 [20%] |
| 54 | 项目章程 | 1d | 2017-11-30 A | 2017-11-30 A | 邱英凡 [20%]; 仲叶 [20%] |
| 91 | wbs修改 | 27d | 2017-12-17 | 2018-01-12 | 史晨鑫 [5%]; 邱英凡 [5%]; 任剑超 [5%]; 汪涛 [5%]; 仲叶 [5%] |
| 109 | 软件需求变更文档 | 2d | 2017-12-24 | 2017-12-25 | 邱英凡 [20%]; 任剑超 [20%]; 史晨鑫 [20%]; 汪涛 [20%]; 仲叶 [20%] |
| 129 | 系统设计与实现计划 | 2d | 2018-01-03 | 2018-01-04 | 邱英凡 [20%]; 任剑超 [20%]; 史晨鑫 [20%]; 汪涛 [20%]; 仲叶 [20%] |
| 144 | 变更控制及影响说明 | 1d | 2017-11-11 | 2017-11-11 | 邱英凡 [20%]; 任剑超 [20%]; 史晨鑫 [20%]; 汪涛 [20%]; 仲叶 [20%] |
| 153 | 系统测试计划 | 1d | 2018-01-18 | 2018-01-18 | 邱英凡; 任剑超; 史晨鑫; 汪涛; 仲叶 |

Changed:

| ID | Task | Start | Finish | Duration | Complete | Other |
| --- | --- | --- | --- | --- | --- | --- |
| 1 | **准备阶段** |  |  |  | 72% → 75% |  |
| 6 | 可行性分析 |  |  |  |  | resources 邱英凡; 任剑超; 史晨鑫; 汪涛; 仲叶 → 邱英凡 [20%]; 任剑超 [20%]; 史晨鑫 [20%]; 汪涛 [20%]; 仲叶 [20%] |
| 8 | 项目总体计划 | 2017-10-17 A → 2017-10-15 A (-2d) | 2017-10-24 → 2017-10-22 (-2d) |  |  | resources 邱英凡; 任剑超; 史晨鑫; 汪涛; 仲叶 → 邱英凡 [20%]; 任剑超 [20%] |
| 9 | **计划阶段** | 2017-10-25 A → 2017-10-25 |  |  |  |  |
| 10 | wbs初稿 |  |  |  |  | resources none → 仲叶 [20%] |
| 12 | 项目章程 | 2017-10-26 A → 2017-10-15 A (-11d) | 2017-10-26 A → 2017-10-15 A (-11d) |  |  | resources 史晨鑫; 汪涛 → 史晨鑫 [20%]; 汪涛 [20%] |
| 14 | 需求工程项目计划 |  |  |  |  | resources 史晨鑫; 汪涛; 仲叶 → 史晨鑫 [20%]; 汪涛 [20%] |
| 15 | **执行阶段** | 2017-11-01 A |  |  | 42% → 46% |  |
| 17 | **需求工程** |  |  |  | 42% → 46% |  |
| 20 | **需求获取** |  |  |  | 55% → 56% |  |
| 23 | 项目章程 |  |  |  |  | resources 邱英凡; 任剑超; 史晨鑫; 汪涛; 仲叶 → 邱英凡 [20%] |
| 24 | 定义愿景和范围 |  | 2017-11-10 A → 2017-11-08 A (-2d) | 8d → 6d |  | resources 邱英凡 [20%]; 任剑超 [20%] → 邱英凡 [20%]; 史晨鑫; 汪涛; 仲叶 |
| 26 | 识别用户群、选择产品代言人 | 2017-11-11 A → 2017-11-04 A (-7d) | 2017-11-16 A → 2017-11-06 A (-10d) | 6d → 3d |  |  |
| 39 | 项目章程 |  |  |  |  | resources 邱英凡; 任剑超; 史晨鑫; 汪涛; 仲叶 → 汪涛 [20%] |
| 43 | **需求分析** |  |  |  | 40% → 57% |  |
| 45 | 应用环境建模 |  |  |  |  | resources 任剑超 [25%]; 史晨鑫 [25%] → 任剑超 [20%]; 史晨鑫 [20%] |
| 46 | 创建原型 |  |  |  |  | resources 史晨鑫 [25%]; 汪涛 [25%] → 史晨鑫 [20%]; 汪涛 [20%] |
| 50 | 分析实现可行性 |  |  |  |  | resources 史晨鑫 [25%]; 仲叶 [25%] → 史晨鑫 [20%]; 仲叶 [20%] |
| 55 | 排列需求优先级 |  |  |  |  | resources 任剑超 [25%]; 汪涛 [25%] → 任剑超 [20%]; 汪涛 [20%] |
| 57 | 创建数字字典 |  |  |  |  | resources 邱英凡 [25%]; 任剑超 [25%] → 邱英凡 [20%]; 任剑超 [20%] |
| 59 | 需求建模 |  |  |  |  | resources 邱英凡 [25%]; 任剑超 [25%]; 仲叶 [25%] → 邱英凡 [20%]; 任剑超 [20%]; 仲叶 [20%] |
| 61 | 分析接口 |  |  |  |  | resources 任剑超 [25%]; 史晨鑫 [25%] → 任剑超 [20%]; 史晨鑫 [20%] |
| 63 | 将需求分配到子接口 |  |  |  |  | resources 汪涛 [25%]; 仲叶 [25%] → 汪涛 [20%]; 仲叶 [20%] |
| 67 | 采用需求文档模板 |  |  |  |  | resources 任剑超 [25%]; 汪涛 [25%]; 仲叶 [25%] → 任剑超 [20%]; 汪涛 [20%]; 仲叶 [20%] |
| 68 | 识别需求源头 |  |  |  |  | resources 邱英凡 [25%]; 仲叶 [25%]; 任剑超 [25%] → 邱英凡 [20%]; 仲叶 [20%]; 任剑超 [20%] |
| 70 | 为每个需求分配唯一标识 |  |  |  |  | resources 邱英凡 [25%]; 史晨鑫 [25%]; 仲叶 [25%] → 邱英凡 [20%]; 史晨鑫 [20%]; 仲叶 [20%] |
| 71 | 记录业务规则 |  |  |  |  | resources 任剑超 [25%]; 汪涛 [25%]; 邱英凡 [25%] → 任剑超 [20%]; 汪涛 [20%]; 邱英凡 [20%] |
| 73 | 描述非功能性需求 |  |  |  |  | resources 史晨鑫 [25%]; 汪涛 [25%]; 邱英凡 [25%] → 史晨鑫 [20%]; 汪涛 [20%]; 邱英凡 [20%] |
| 75 | 软件需求规格说明书 | 2017-12-14 → 2017-12-15 (+1d) |  | 4d → 3d |  | was named 需求功能说明书; resources 邱英凡 [25%]; 任剑超 [25%]; 史晨鑫 [25%]; 汪涛 [25%]; 仲叶 [25%] → 邱英凡 [20%]; 任剑超 [20%]; 史晨鑫 [20%]; 汪涛 [20%]; 仲叶 [20%] |
| 81 | 评审需求 |  |  |  |  | resources 任剑超 [25%]; 邱英凡 [25%] → 任剑超 [20%]; 邱英凡 [20%] |
| 83 | 测试需求 |  |  |  |  | resources 史晨鑫 [25%]; 汪涛 [25%]; 仲叶 [25%] → 史晨鑫 [20%]; 汪涛 [20%]; 仲叶 [20%] |
| 85 | 定义验收条件 |  |  |  |  | resources 邱英凡 [25%]; 任剑超 [25%] → 邱英凡 [20%]; 任剑超 [20%] |
| 87 | 模拟需求 |  |  |  |  | resources 史晨鑫 [25%]; 汪涛 [25%]; 仲叶 [25%] → 史晨鑫 [20%]; 汪涛 [20%]; 仲叶 [20%] |
| 94 | 建立变更控制流程 |  |  |  |  | resources 邱英凡 [25%]; 汪涛 [25%]; 仲叶 [25%] → 邱英凡 [20%]; 汪涛 [20%]; 仲叶 [20%] |
| 95 | 分析变更影响 |  |  |  |  | resources 任剑超 [25%]; 史晨鑫 [25%]; 仲叶 [25%] → 任剑超 [20%]; 史晨鑫 [20%]; 仲叶 [20%] |
| 97 | 建立基线，管理需求版本 |  |  |  |  | resources 任剑超 [25%]; 汪涛 [25%] → 任剑超 [20%]; 汪涛 [20%] |
| 99 | 维护变更历史 |  |  |  |  | resources 邱英凡 [25%]; 史晨鑫 [25%]; 仲叶 [25%] → 邱英凡 [20%]; 史晨鑫 [20%]; 仲叶 [20%] |
| 101 | 跟踪需求状态 |  |  |  |  | resources 汪涛 [25%]; 仲叶 [25%]; 邱英凡 [25%] → 汪涛 [20%]; 仲叶 [20%]; 邱英凡 [20%] |
| 103 | 跟踪需求问题 |  |  |  |  | resources 邱英凡 [25%]; 史晨鑫 [25%]; 仲叶 [25%] → 邱英凡 [20%]; 史晨鑫 [20%]; 仲叶 [20%] |
| 107 | 使用需求管理工具 |  |  |  |  | resources 邱英凡 [25%]; 任剑超 [25%]; 史晨鑫 [25%]; 汪涛 [25%]; 仲叶 [25%] → 邱英凡 [20%]; 任剑超 [20%]; 史晨鑫 [20%]; 汪涛 [20%]; 仲叶 [20%] |
| 112 | 培训业务分析师 |  |  |  |  | resources 汪涛 [25%]; 仲叶 [25%] → 汪涛 [20%]; 仲叶 [20%] |
| 114 | 向干系人讲解需求内容 |  |  |  |  | resources 任剑超 [25%]; 史晨鑫 [25%] → 任剑超 [20%]; 史晨鑫 [20%] |
| 116 | 向开发人员讲应用领域知识 |  |  |  |  | resources 邱英凡 [25%] → 邱英凡 [20%] |
| 118 | 定义一个需求工程流程 |  |  |  |  | resources 邱英凡 [25%]; 史晨鑫 [25%]; 仲叶 [25%] → 邱英凡 [20%]; 史晨鑫 [20%]; 仲叶 [20%] |
| 120 | 建立一个词汇表 |  |  |  |  | resources 任剑超 [25%]; 汪涛 [25%] → 任剑超 [20%]; 汪涛 [20%] |
| 123 | 选择合适的生命周期模型 |  |  |  |  | resources 邱英凡 [25%]; 汪涛 [25%]; 仲叶 [25%] → 邱英凡 [20%]; 汪涛 [20%]; 仲叶 [20%] |
| 125 | 规划需求方案 |  |  |  |  | resources 任剑超 [25%]; 史晨鑫 [25%]; 汪涛 [25%] → 任剑超 [20%]; 史晨鑫 [20%]; 汪涛 [20%] |
| 130 | 估算需求工作量 |  |  |  |  | resources 邱英凡 [25%]; 汪涛 [25%] → 邱英凡 [20%]; 汪涛 [20%] |
| 132 | 基于需求做计划 |  |  |  |  | resources 汪涛 [25%]; 仲叶 [25%] → 汪涛 [20%]; 仲叶 [20%] |
| 134 | 发现需求决策者 |  |  |  |  | resources 邱英凡 [25%]; 汪涛 [25%]; 仲叶 [25%] → 邱英凡 [20%]; 汪涛 [20%]; 仲叶 [20%] |
| 137 | 重新协商承诺 |  |  |  |  | resources 邱英凡 [25%]; 仲叶 [25%] → 邱英凡 [20%]; 仲叶 [20%] |
| 139 | 管理需求风险 |  |  |  |  | resources 邱英凡 [25%]; 仲叶 [25%] → 邱英凡 [20%]; 仲叶 [20%] |
| 141 | 跟踪记录需求工作量 |  |  |  |  | resources 任剑超 [25%]; 仲叶 [25%] → 任剑超 [20%]; 仲叶 [20%] |
| 145 | 回顾学到的经验 | 2018-01-11 → 2018-01-12 (+1d) | 2018-01-11 → 2018-01-12 (+1d) |  |  | resources 邱英凡 [50%]; 任剑超 [50%]; 史晨鑫 [50%]; 汪涛 [50%]; 仲叶 [50%] → 邱英凡 [20%]; 任剑超 [20%]; 史晨鑫 [20%]; 汪涛 [20%]; 仲叶 [20%] |
| 147 | **收尾阶段** |  | 2018-01-17 → 2018-01-19 (+2d) | 9.5d → 8d |  |  |
| 150 | 各文档检查 | 2018-01-12 → 2018-01-13 (+1d) | 2018-01-15 → 2018-01-17 (+2d) | 4d → 5d |  |  |
| 154 | 整理文档 | 2018-01-16 → 2018-01-19 (+3d) | 2018-01-17 → 2018-01-19 (+2d) | 2d → 1d |  |  |

## Version 6 (saved 2017-11-30)

Note of the change: Merge branch '受控文档' of https://github.com/PRD2017G23/Software-Engineering-Series-Teaching-Auxiliary-Web-site-project into 受控文档

Last finish stays 2018-01-19. Complete tasks 45 → 44.

Changed:

| ID | Task | Start | Finish | Duration | Complete | Other |
| --- | --- | --- | --- | --- | --- | --- |
| 1 | **准备阶段** |  |  |  | 75% → 50% |  |
| 5 | 搜集文档模板 | 2017-09-29 A → 2017-10-02 A (+3d) | 2017-10-10 A → 2017-10-06 (-4d) | 12d → 2d | 100% → 0% | resources 任剑超 → 邱英凡 |
| 17 | **需求工程** |  |  |  | 46% → 45% |  |
| 33 | 需求获取访谈 |  |  |  |  | resources 汪涛 [20%]; 仲叶 [20%] → 汪涛 [10%]; 仲叶; 邱英凡; 任剑超 [10%]; 史晨鑫 |
| 37 | 分析文档 |  |  |  |  | resources 任剑超 [20%]; 史晨鑫 [20%]; 汪涛 [20%] → 任剑超 [20%]; 史晨鑫 [20%]; 汪涛 |
| 38 | 重用已有的需求 |  |  |  |  | resources 邱英凡 [20%]; 任剑超 [20%] → 邱英凡; 任剑超 [20%]; 史晨鑫; 仲叶 |
| 39 | 项目章程 |  |  |  |  | resources 汪涛 [20%] → 汪涛 |
| 40 | 用户群分类 |  |  |  |  | resources 仲叶 [20%] → 仲叶 |
| 41 | 定义愿景和范围 |  |  |  |  | resources 史晨鑫 [20%] → 史晨鑫 |
| 42 | 可行性分析 |  |  | 1d → 0d |  | resources 仲叶 [20%] → 仲叶 |
| 45 | 应用环境建模 |  |  |  |  | resources 任剑超 [20%]; 史晨鑫 [20%] → 任剑超 [20%] |
| 48 | 用户群分类 |  |  |  |  | resources 邱英凡 [20%] → 邱英凡 |
| 49 | 需求工程项目计划 |  |  |  |  | resources 邱英凡 [20%] → 邱英凡 |
| 51 | 定义愿景和范围 |  |  |  |  | resources 邱英凡 [20%] → 邱英凡 |
| 54 | 项目章程 |  |  |  |  | resources 邱英凡 [20%]; 仲叶 [20%] → 邱英凡; 仲叶 [20%] |
| 81 | 评审需求 | 2017-11-24 → 2017-12-11 (+17d) | 2017-11-27 → 2017-12-14 (+17d) |  |  |  |
| 83 | 测试需求 | 2017-11-24 → 2017-12-12 (+18d) | 2017-11-27 → 2017-12-13 (+16d) | 4d → 2d |  |  |
| 85 | 定义验收条件 | 2017-11-28 → 2017-12-13 (+15d) | 2017-12-01 → 2017-12-18 (+17d) | 4d → 6d |  |  |
| 144 | 变更控制及影响说明 | 2017-11-11 → 2018-01-11 (+61d) | 2017-11-11 → 2018-01-11 (+61d) |  |  |  |
